How a schedule from MS Project changed from version to version. A marks actual dates.

## Version 1 (saved 2016-09-22)

Note of the change: [Coding]_Tách các đoạn script ra file riêng Đã tách ở phần slider và publisher

| ID | WBS | Task | Duration | Start | Finish | Predecessors | Total float | Constraint |
| --- | --- | --- | --- | --- | --- | --- | --- | --- |
| 1 | 1 | **Bookaholic Social Network** | 81d? | 2016-09-05 08:00 | 2016-12-26 17:00 |  | 0d |  |
| 2 | 1.1 | **Initial** | 9d | 2016-09-05 08:00 | 2016-09-15 17:00 |  | 5d |  |
| 3 |  | Form up team roles | 0.5d | 2016-09-05 08:00 | 2016-09-05 12:00 |  | 7.5d | start no earlier than 2016-09-05 08:00 |
| 4 |  | Select project idea | 0.5d | 2016-09-05 13:00 | 2016-09-05 17:00 | 3 | 7.5d | start no earlier than 2016-09-05 08:00 |
| 5 | 1.1.3 | **Develop project idea** | 6d | 2016-09-06 08:00 | 2016-09-13 17:00 | 4 | 7d |  |
| 6 |  | Define Project Scope | 0.5d | 2016-09-06 08:00 | 2016-09-06 12:00 |  | 7.5d | start no earlier than 2016-09-06 08:00 |
| 7 |  | Define Project Features | 0.5d | 2016-09-06 08:00 | 2016-09-06 12:00 | 6SS | 7.5d | start no earlier than 2016-09-06 08:00 |
| 8 |  | Create Project Introduction | 1d | 2016-09-07 08:00 | 2016-09-07 17:00 | 7 | 10d | start no earlier than 2016-09-07 08:00 |
| 9 |  | Review Project Introduction | 0.5d | 2016-09-08 08:00 | 2016-09-08 12:00 | 8 | 10d |  |
| 10 |  | Update Project Introduction | 0.5d | 2016-09-08 13:00 | 2016-09-08 17:00 | 9 | 10d | start no earlier than 2016-09-08 08:00 |
| 11 |  | Create Mockup (Part 1) | 5d | 2016-09-07 08:00 | 2016-09-13 17:00 | 7 | 7d | start no earlier than 2016-09-07 08:00 |
| 12 | 1.1.4 | **Environment** | 1d | 2016-09-06 08:00 | 2016-09-06 17:00 | 5SS | 12d |  |
| 13 |  | Install tools & environment | 0.5d | 2016-09-06 08:00 | 2016-09-06 12:00 |  | 12d | start no earlier than 2016-09-06 08:00 |
| 14 |  | Training using tools & environment | 0.5d | 2016-09-06 13:00 | 2016-09-06 17:00 | 13 | 12d | start no earlier than 2016-09-06 08:00 |
| 15 | 1.1.5 | **Technology Research (Part 1)** | 4d | 2016-09-09 08:00 | 2016-09-14 17:00 |  | 5d |  |
| 16 |  | Study .net MVC5 | 4d | 2016-09-09 08:00 | 2016-09-14 17:00 |  | 5d | start no earlier than 2016-09-09 08:00 |
| 17 |  | Study Bootstrap, HTML5, CSS3 | 4d | 2016-09-09 08:00 | 2016-09-14 17:00 | 16SS | 5d | start no earlier than 2016-09-09 08:00 |
| 18 |  | Kick-off meeting | 1d | 2016-09-15 08:00 | 2016-09-15 17:00 | 15 | 5d |  |
| 19 |  | End of initiation phase | 0d | 2016-09-15 17:00 | 2016-09-15 17:00 | 18 | 5d | start no earlier than 2016-09-15 08:00 |
| 20 | 1.2 | **Implement 1** | 19d? | 2016-09-16 08:00 | 2016-10-12 17:00 | 2 | 0d |  |
| 21 | 1.2.1 | **Requirement** | 1d | 2016-09-16 08:00 | 2016-09-16 17:00 |  | 5d |  |
| 22 |  | Define User Requirement (Part 1) | 1d | 2016-09-16 08:00 | 2016-09-16 17:00 |  | 5d | start no earlier than 2016-09-16 08:00 |
| 23 | 1.2.2 | **Analysis & design** | 13d | 2016-09-19 08:00 | 2016-10-06 08:00 | 21 | 5d |  |
| 24 | 1.2.2.1 | **Q&A Sheet** | 2d | 2016-09-19 08:00 | 2016-09-20 17:00 |  | 15.5d |  |
| 25 |  | Create Q&A Sheet | 0.5d | 2016-09-19 08:00 | 2016-09-19 12:00 |  | 15.5d | start no earlier than 2016-09-19 08:00 |
| 26 |  | Review Q&A Sheet | 0.3d | 2016-09-19 13:00 | 2016-09-19 15:24 | 25 | 15.5d | start no earlier than 2016-09-19 08:00 |
| 27 |  | Update Q&A Sheet | 0.2d | 2016-09-19 15:24 | 2016-09-19 17:00 | 26 | 15.5d | start no earlier than 2016-09-19 08:00 |
| 28 |  | Translate Q&A Sheet to Japanese | 1d | 2016-09-20 08:00 | 2016-09-20 17:00 | 27 | 15.5d | start no earlier than 2016-09-20 08:00 |
| 29 |  | Complete Q&A Sheet | 0d | 2016-09-20 17:00 | 2016-09-20 17:00 | 28 | 15.5d |  |
| 30 | 1.2.2.2 | **Create Project Plan** | 2d | 2016-09-19 08:00 | 2016-09-20 17:00 | 24SS | 5d |  |
| 31 |  | Create PP Review Checklist | 0.5d | 2016-09-19 08:00 | 2016-09-19 12:00 |  | 5d |  |
| 32 |  | Create Project Plan in MS Word | 1d | 2016-09-19 08:00 | 2016-09-19 17:00 | 31SS | 6d |  |
| 33 |  | Create Project Schedule in .mpp file | 2d | 2016-09-19 08:00 | 2016-09-20 17:00 | 31SS | 5d |  |
| 34 |  | Create CM Plan | 1d | 2016-09-19 08:00 | 2016-09-19 17:00 | 31SS | 5d |  |
| 35 |  | Review Project Plan, CM Plan, Schedule | 0.5d | 2016-09-20 08:00 | 2016-09-20 12:00 | 34 | 5d |  |
| 36 |  | Update Project Plan, CM Plan, Schedule | 0.5d | 2016-09-20 13:00 | 2016-09-20 17:00 | 35 | 5d | start no earlier than 2016-09-16 08:00 |
| 37 |  | Complete Project Plan | 0d | 2016-09-20 17:00 | 2016-09-20 17:00 | 36 | 5d | start no earlier than 2016-09-20 08:00 |
| 38 | 1.2.2.3 | **User Requirement Specification (Part 1)** | 2d | 2016-09-21 08:00 | 2016-09-23 08:00 | 30 | 13d |  |
| 39 |  | Create SRS Review Checklist (Part 1) | 1d | 2016-09-21 08:00 | 2016-09-21 17:00 |  | 13d | start no earlier than 2016-09-16 08:00 |
| 40 |  | Create User Requirement Specification (Part 1) | 1d | 2016-09-21 08:00 | 2016-09-21 17:00 | 39SS | 13d | start no earlier than 2016-09-16 08:00 |
| 41 |  | Review User Requirement Specification (Part 1) | 0.5d | 2016-09-22 08:00 | 2016-09-22 12:00 | 40 | 13d |  |
| 42 |  | Update User Requirement Specification (Part 1) | 0.5d | 2016-09-22 13:00 | 2016-09-22 17:00 | 41 | 13d | start no earlier than 2016-09-15 08:00 |
| 43 |  | Complete User Requirement Specification (Part 1) | 0d | 2016-09-23 08:00 | 2016-09-23 08:00 | 42 | 13d | start no earlier than 2016-09-23 08:00 |
| 44 |  | Create Progress Report 1 (Part 1) | 1d | 2016-09-23 08:00 | 2016-09-23 17:00 | 38 | 13d |  |
| 45 |  | Submit Report 1 (Part 1) | 0d | 2016-09-27 08:00 | 2016-09-27 08:00 | 44 | 12d | start no earlier than 2016-09-27 08:00 |
| 46 | 1.2.2.6 | **Design** | 5.5d | 2016-09-28 08:00 | 2016-10-05 12:00 | 30 | 0d |  |
| 47 |  | Create Architecture Design | 3d | 2016-09-28 08:00 | 2016-09-30 17:00 |  | 0d | start no earlier than 2016-09-28 08:00 |
| 48 |  | Create Mockup (Part 2) | 5d | 2016-09-28 08:00 | 2016-10-04 17:00 | 47SS | 6d | start no earlier than 2016-09-28 08:00 |
| 49 |  | Database Design | 3d | 2016-09-28 08:00 | 2016-09-30 17:00 | 47SS | 0d | start no earlier than 2016-09-28 08:00 |
| 50 |  | Class/Component Design | 2d | 2016-10-03 08:00 | 2016-10-04 17:00 | 49 | 5d |  |
| 51 |  | Create Design Review Checklist | 0.5d | 2016-10-05 08:00 | 2016-10-05 12:00 | 50 | 5d |  |
| 52 |  | Create Progress Report 2 (Part 1) | 0.5d | 2016-10-05 13:00 | 2016-10-05 17:00 | 51 | 5d |  |
| 53 |  | Create Coding Checklist (Part 1) | 0.5d | 2016-09-21 08:00 | 2016-09-21 12:00 | 24 | 15.5d |  |
| 54 |  | Submit Report 2 (Part 1) | 0d | 2016-10-06 08:00 | 2016-10-06 08:00 | 52 | 5d | start no earlier than 2016-10-06 08:00 |
| 55 | 1.2.3 | **Development** | 6d? | 2016-10-03 08:00 | 2016-10-10 17:00 | 49 | 0d |  |
| 56 | 1.2.3.1 | **Technology Research (Part 2)** | 0.5d | 2016-10-03 08:00 | 2016-10-03 12:00 |  | 0d |  |
| 57 |  | Google API | 0.5d | 2016-10-03 08:00 | 2016-10-03 12:00 |  | 0d | start no earlier than 2016-09-14 08:00 |
| 58 |  | Facebook API | 0.5d | 2016-10-03 08:00 | 2016-10-03 12:00 | 57SS | 0d |  |
| 59 |  | Create Unit Test Checklist (Part 1) | 0.5d | 2016-10-03 08:00 | 2016-10-03 12:00 | 56SS | 7.5d |  |
| 60 | 1.2.3.3 | **Code Screen Module** | 5d? | 2016-10-03 08:00 | 2016-10-07 17:00 | 56SS | 3d |  |
| 61 |  | "Admin Management" Screen | 1d | 2016-10-03 08:00 | 2016-10-03 17:00 |  | 3d |  |
| 62 |  | "Đăng Nhập"Screen | 1d? | 2016-10-03 08:00 | 2016-10-03 17:00 | 61SS | 3d |  |
| 63 |  | "Trang Chủ"Screen | 2d | 2016-10-04 08:00 | 2016-10-05 17:00 | 62 | 3d | start no earlier than 2016-09-19 08:00 |
| 64 |  | "Trang cá nhân"Screen | 1d? | 2016-10-06 08:00 | 2016-10-06 17:00 | 63 | 3d | start no earlier than 2016-09-19 08:00 |
| 65 |  | "Tác giả"Screen | 1d | 2016-10-07 08:00 | 2016-10-07 17:00 | 64 | 3d |  |
| 66 | 1.2.3.4 | **Code & Unit Test** | 5.5d? | 2016-10-03 13:00 | 2016-10-10 17:00 | 56 | 0d |  |
| 67 | 1.2.3.4.1 | **Admin Module (Part 1)** | 1d | 2016-10-03 13:00 | 2016-10-04 12:00 |  | 0d |  |
| 68 |  | Book Management Feature | 0.5d | 2016-10-03 13:00 | 2016-10-03 17:00 |  | 0d |  |
| 69 |  | Publisher Management Feature | 0.5d | 2016-10-03 13:00 | 2016-10-03 17:00 | 68SS | 0.5d |  |
| 70 |  | Slide Management Feature | 1d | 2016-10-03 13:00 | 2016-10-04 12:00 | 68SS | 0d |  |

| ID | WBS | Task | Duration | Start | Finish | Predecessors | Total float | Constraint |
| --- | --- | --- | --- | --- | --- | --- | --- | --- |
| 71 | 1.2.3.4.2 | **Account Management Module** | 4.5d? | 2016-10-04 13:00 | 2016-10-10 17:00 | 67 | 0d |  |
| 72 |  | Account Register Function | 2d | 2016-10-04 13:00 | 2016-10-06 12:00 |  | 0d |  |
| 73 |  | LogIn/LogOut Feature | 1.5d | 2016-10-06 13:00 | 2016-10-07 17:00 | 72 | 0d |  |
| 74 |  | Edit Profile Function | 0.5d? | 2016-10-10 08:00 | 2016-10-10 12:00 | 73 | 0d |  |
| 75 |  | Reset Password Function | 1d | 2016-10-10 08:00 | 2016-10-10 17:00 | 74SS | 0d |  |
| 76 | 1.2.3.4.3 | **System Module (Part 1)** | 2d | 2016-10-06 13:00 | 2016-10-10 12:00 | 73SS | 0.5d |  |
| 77 |  | Send Mail Feature | 2d | 2016-10-06 13:00 | 2016-10-10 12:00 |  | 0.5d |  |
| 78 | 1.2.4 | **Testing** | 4d | 2016-10-03 13:00 | 2016-10-07 12:00 | 66SS | 2.5d |  |
| 79 |  | Create Test Plan (Part 1) | 0.5d | 2016-10-03 13:00 | 2016-10-03 17:00 |  | 4.5d |  |
| 80 |  | Create Test Plan Checklist (Part 1) | 0.5d | 2016-10-04 08:00 | 2016-10-04 12:00 | 79 | 4.5d |  |
| 81 | 1.2.4.3 | **Writing Test Case (Part 1)** | 1d | 2016-10-04 13:00 | 2016-10-05 12:00 | 80 | 4.5d |  |
| 82 |  | Create Admin Module Test Case (Part 1) | 0.5d | 2016-10-04 13:00 | 2016-10-04 17:00 |  | 4.5d |  |
| 83 |  | Create Account Management Module Test Case (Part 1) | 0.5d | 2016-10-05 08:00 | 2016-10-05 12:00 | 82 | 4.5d |  |
| 84 |  | Create System Module Test Case (Part 1) | 0.5d | 2016-10-05 08:00 | 2016-10-05 12:00 | 83SS | 4.5d |  |
| 85 |  | Create Test Case Checklist (Part 1) | 0.5d | 2016-10-04 13:00 | 2016-10-04 17:00 | 81SS | 2.5d |  |
| 86 |  | Execute Test (Part 1) | 2d | 2016-10-05 08:00 | 2016-10-06 17:00 | 85 | 2.5d |  |
| 87 |  | Create Test Report (Part 1) | 0.5d | 2016-10-07 08:00 | 2016-10-07 12:00 | 86 | 2.5d |  |
| 88 |  | Testing Part 1 Complete | 0d | 2016-10-07 12:00 | 2016-10-07 12:00 | 87 | 2.5d | start no earlier than 2016-10-07 08:00 |
| 89 |  | Create Progress Report 3 (Part 1) | 0.5d | 2016-10-05 13:00 | 2016-10-05 17:00 | 79, 81 | 5d |  |
| 90 |  | Submit Report 3 (Part 1) | 0d | 2016-10-05 17:00 | 2016-10-05 17:00 | 89 | 5d |  |
| 91 |  | Submit Report 4 (Part 1) | 0d | 2016-10-05 17:00 | 2016-10-05 17:00 | 90 | 5d |  |
| 92 |  | Create Quality Report (Part 1) | 1d? | 2016-10-07 13:00 | 2016-10-10 12:00 | 78 | 2.5d |  |
| 93 |  | Create Progress Report (Part 1) | 1d? | 2016-10-11 08:00 | 2016-10-11 17:00 | 66 | 0d |  |
| 94 |  | Submit Report 5 (Part 1) | 0d | 2016-10-11 17:00 | 2016-10-11 17:00 | 93 | 0d |  |
| 95 |  | Evaluation | 1d? | 2016-10-12 08:00 | 2016-10-12 17:00 | 94 | 0d |  |
| 96 |  | End Implement 1 | 0d | 2016-10-12 17:00 | 2016-10-12 17:00 | 95 | 0d |  |
| 97 | 1.3 | **Implement 2** | 29.5d? | 2016-10-13 08:00 | 2016-11-23 12:00 | 20 | 0d |  |
| 98 | 1.3.1 | **Requirement** | 1d? | 2016-10-13 08:00 | 2016-10-13 17:00 |  | 0d |  |
| 99 |  | Define User Requirement (Part 2) | 1d? | 2016-10-13 08:00 | 2016-10-13 17:00 |  | 0d |  |
| 100 | 1.3.2 | **Analysis & design** | 3d? | 2016-10-14 08:00 | 2016-10-18 17:00 | 98 | 0d |  |
| 101 | 1.3.2.1 | **User Requirement Specification (Part 2)** | 2d? | 2016-10-14 08:00 | 2016-10-18 08:00 |  | 0d |  |
| 102 |  | Create SRS Review Checklist (Part 2) | 1d? | 2016-10-14 08:00 | 2016-10-14 17:00 |  | 0d |  |
| 103 |  | Create User Requirement Sepecification (Part 2) | 1d? | 2016-10-14 08:00 | 2016-10-14 17:00 | 102SS | 0d |  |
| 104 |  | Review User Requirement Specification (Part 2) | 0.5d | 2016-10-17 08:00 | 2016-10-17 12:00 | 103 | 0d |  |
| 105 |  | Update User Requirement Specification (Part 2) | 0.5d? | 2016-10-17 13:00 | 2016-10-17 17:00 | 104 | 0d |  |
| 106 |  | Complete User Requirement Specification (Part 2) | 0d | 2016-10-18 08:00 | 2016-10-18 08:00 | 105 | 0d | start no earlier than 2016-10-18 08:00 |
| 107 |  | Create Coding Checklist (Part 2) | 0.5d | 2016-10-18 08:00 | 2016-10-18 12:00 | 101 | 0.5d |  |
| 108 |  | Create Progress Report 1 (Part 2) | 0.5d | 2016-10-18 08:00 | 2016-10-18 12:00 | 101 | 0d |  |
| 109 |  | Submit Report 1 (Part 2) | 0d | 2016-10-18 12:00 | 2016-10-18 12:00 | 108 | 0.5d |  |
| 110 |  | Create Progress Report 2 (Part 2) | 0.5d | 2016-10-18 13:00 | 2016-10-18 17:00 | 108 | 0d |  |
| 111 |  | Submit Report 2 (Part 2) | 0d | 2016-10-18 17:00 | 2016-10-18 17:00 | 110 | 0d |  |
| 112 | 1.3.3 | **Development** | 23.5d? | 2016-10-19 08:00 | 2016-11-21 12:00 | 100 | 0d |  |
| 113 | 1.3.3.1 | **Technology Research (Part 3)** | 2d | 2016-10-19 08:00 | 2016-10-20 17:00 |  | 0d |  |
| 114 |  | .NET SignalR | 2d | 2016-10-19 08:00 | 2016-10-20 17:00 |  | 0d |  |
| 115 |  | Create Unit Test Checklist (Part 2) | 0.5d | 2016-10-21 08:00 | 2016-10-21 12:00 | 113 | 0d |  |
| 116 | 1.3.3.3 | **Code Screen Module** | 1d | 2016-10-19 08:00 | 2016-10-19 17:00 | 113SS | 24.5d |  |
| 117 |  | "Group Management" Screen | 1d | 2016-10-19 08:00 | 2016-10-19 17:00 | 61 | 24.5d |  |
| 118 | 1.3.3.4 | **Code & Unit Test** | 21d? | 2016-10-21 13:00 | 2016-11-21 12:00 | 115 | 0d |  |
| 119 | 1.3.3.4.1 | **Common Module** | 2d? | 2016-10-21 13:00 | 2016-10-25 12:00 |  | 0d |  |
| 120 |  | User Search Function | 2d | 2016-10-21 13:00 | 2016-10-25 12:00 |  | 0d |  |
| 121 |  | User Rate Book Function | 2d | 2016-10-21 13:00 | 2016-10-25 12:00 | 120SS | 0d |  |
| 122 |  | Suggest Book/Author Function | 1d? | 2016-10-21 13:00 | 2016-10-24 12:00 | 120SS | 1d |  |
| 123 | 1.3.3.4.2 | **Recommendation Management Module** | 12d | 2016-10-25 13:00 | 2016-11-10 12:00 | 119 | 0d |  |
| 124 |  | Management Post Feature | 10d | 2016-10-25 13:00 | 2016-11-08 12:00 |  | 0d |  |
| 125 |  | Management Comment Feature | 5d | 2016-11-01 13:00 | 2016-11-08 12:00 | 124FF | 0d | start no earlier than 2016-10-06 08:00 |
| 126 |  | Manage Reply-Comment Function | 2d | 2016-11-08 13:00 | 2016-11-10 12:00 | 125 | 0d |  |
| 127 | 1.3.3.4.3 | **Group Management Module** | 3d? | 2016-11-10 13:00 | 2016-11-15 12:00 | 123 | 0d |  |
| 128 |  | Group Manage Feature | 1d | 2016-11-10 13:00 | 2016-11-11 12:00 |  | 0d |  |
| 129 |  | Manage Group Member Feature | 1d? | 2016-11-11 13:00 | 2016-11-14 12:00 | 128 | 0d |  |
| 130 |  | Manage Group Post Feature | 1d? | 2016-11-14 13:00 | 2016-11-15 12:00 | 129 | 0d |  |
| 131 | 1.3.3.4.4 | **Interaction Management Module** | 4d | 2016-11-15 13:00 | 2016-11-21 12:00 | 127 | 0d |  |
| 132 |  | Interact With Other Accounts Feature | 4d | 2016-11-15 13:00 | 2016-11-21 12:00 |  | 0d |  |
| 133 |  | Interact With Group Feature | 4d | 2016-11-15 13:00 | 2016-11-21 12:00 | 132SS | 0d |  |
| 134 | 1.3.4 | **Testing** | 5d | 2016-10-21 13:00 | 2016-10-28 12:00 | 118SS | 17d |  |
| 135 |  | Create Test Plan (Part 2) | 0.5d | 2016-10-21 13:00 | 2016-10-21 17:00 |  | 18d |  |
| 136 |  | Create Test Plan Checklist (Part 2) | 0.5d | 2016-10-24 08:00 | 2016-10-24 12:00 | 135 | 18d |  |
| 137 | 1.3.4.3 | **Writing Test Case (Part 2)** | 3d | 2016-10-24 13:00 | 2016-10-27 12:00 | 136 | 18d |  |
| 138 |  | Create Common Module Test Case | 0.5d | 2016-10-24 13:00 | 2016-10-24 17:00 |  | 18d |  |
| 139 |  | Create Recommendation Management Module Test Case | 1d | 2016-10-25 08:00 | 2016-10-25 17:00 | 138 | 18d |  |
| 140 |  | Create Group Management Module Test Case | 1d | 2016-10-26 08:00 | 2016-10-26 17:00 | 139 | 18d |  |

| ID | WBS | Task | Duration | Start | Finish | Predecessors | Total float | Constraint |
| --- | --- | --- | --- | --- | --- | --- | --- | --- |
| 141 |  | Create Interaction Management Module Test Case | 0.5d | 2016-10-27 08:00 | 2016-10-27 12:00 | 140 | 18d |  |
| 142 |  | Create Test Case Checklist (Part 2) | 2d | 2016-10-24 13:00 | 2016-10-26 12:00 | 137SS | 17d |  |
| 143 |  | Execute Test (Part 2) | 1.5d | 2016-10-26 13:00 | 2016-10-27 17:00 | 142 | 17d |  |
| 144 |  | Create Test Report (Part 2) | 0.5d | 2016-10-28 08:00 | 2016-10-28 12:00 | 143 | 17d |  |
| 145 |  | Testing Part 2 Complete | 0d | 2016-10-28 12:00 | 2016-10-28 12:00 | 144 | 17d |  |
| 146 |  | Create Progress Report 3 (Part 2) | 0.5d | 2016-10-27 13:00 | 2016-10-27 17:00 | 135, 137 | 18.5d |  |
| 147 |  | Submit Report 3 (Part 2) | 0d | 2016-10-27 17:00 | 2016-10-27 17:00 | 146 | 18.5d |  |
| 148 |  | Submit Report 4 (Part 2) | 0d | 2016-10-27 17:00 | 2016-10-27 17:00 | 147 | 18.5d |  |
| 149 |  | Create Quality Report (Part 2) | 1d? | 2016-10-28 13:00 | 2016-10-31 12:00 | 134 | 17d |  |
| 150 |  | Create Progress Report 5 (Part 2) | 1d? | 2016-11-21 13:00 | 2016-11-22 12:00 | 118 | 0d |  |
| 151 |  | Submit Report 5 (Part 2) | 0d | 2016-11-22 12:00 | 2016-11-22 12:00 | 150 | 0d |  |
| 152 |  | Evaluation | 1d? | 2016-11-22 13:00 | 2016-11-23 12:00 | 151 | 0d |  |
| 153 |  | End Implement 2 | 0d | 2016-11-23 12:00 | 2016-11-23 12:00 | 152 | 0d |  |
| 154 | 1.4 | **Implement 3** | 15d? | 2016-11-23 13:00 | 2016-12-14 12:00 | 97 | 0d |  |
| 155 | 1.4.1 | **Requirement** | 1d? | 2016-11-23 13:00 | 2016-11-24 12:00 |  | 0d |  |
| 156 |  | Define User Requirement (Part 3) | 1d? | 2016-11-23 13:00 | 2016-11-24 12:00 |  | 0d |  |
| 157 | 1.4.2 | **Analysis & design** | 2.5d? | 2016-11-24 13:00 | 2016-11-28 17:00 | 155 | 0d |  |
| 158 | 1.4.2.1 | **User Requirement Specification (Part 3)** | 1.5d | 2016-11-24 13:00 | 2016-11-25 17:00 |  | 0d |  |
| 159 |  | Create SRS Review Checklist (Part 3) | 0.5d | 2016-11-24 13:00 | 2016-11-24 17:00 |  | 0d |  |
| 160 |  | Create User Requirement Sepecification (Part 3) | 0.5d | 2016-11-24 13:00 | 2016-11-24 17:00 | 159SS | 0d |  |
| 161 |  | Review User Requirement Specification (Part 3) | 0.5d | 2016-11-25 08:00 | 2016-11-25 12:00 | 160 | 0d |  |
| 162 |  | Update User Requirement Specification (Part 3) | 0.5d | 2016-11-25 13:00 | 2016-11-25 17:00 | 161 | 0d |  |
| 163 |  | Complete User Requirement Specification (Part 3) | 0d | 2016-11-25 17:00 | 2016-11-25 17:00 | 162 | 0d |  |
| 164 |  | Create Coding Checklist (Part 3) | 0.5d | 2016-11-28 08:00 | 2016-11-28 12:00 | 158 | 0.5d |  |
| 165 |  | Create Progress Report 1 (Part 3) | 0.5d | 2016-11-28 08:00 | 2016-11-28 12:00 | 158 | 0d |  |
| 166 |  | Submit Report 1 (Part 3) | 0d | 2016-11-28 12:00 | 2016-11-28 12:00 | 165 | 0.5d |  |
| 167 |  | Create Progress Report 2 (Part 3) | 1d? | 2016-11-28 08:00 | 2016-11-28 17:00 | 165SS | 0d |  |
| 168 |  | Submit Report 2 (Part 3) | 0d | 2016-11-28 17:00 | 2016-11-28 17:00 | 167 | 0d |  |
| 169 | 1.4.3 | **Development** | 10d? | 2016-11-29 08:00 | 2016-12-12 17:00 | 157 | 0d |  |
| 170 | 1.4.3.1 | **Technology Research (Part 3)** | 1d? | 2016-11-29 08:00 | 2016-11-29 17:00 |  | 10.5d |  |
| 171 |  | Generate chart in .NET | 1d? | 2016-11-29 08:00 | 2016-11-29 17:00 |  | 10.5d |  |
| 172 |  | Create Unit Test Checklist (Part 3) | 1d? | 2016-11-29 08:00 | 2016-11-29 17:00 | 170SS | 0d |  |
| 173 | 1.4.3.3 | **Code & Unit Test** | 9d | 2016-11-30 08:00 | 2016-12-12 17:00 | 172 | 0d |  |
| 174 | 1.4.3.3.1 | **System Module (Part 2)** | 3d | 2016-11-30 08:00 | 2016-12-02 17:00 |  | 0d |  |
| 175 |  | Statistic Feature | 3d | 2016-11-30 08:00 | 2016-12-02 17:00 |  | 0d |  |
| 176 | 1.4.3.3.2 | **Admin Module (Part 2)** | 6d | 2016-12-05 08:00 | 2016-12-12 17:00 | 174 | 0d |  |
| 177 |  | Manage User Account Feature | 3d | 2016-12-05 08:00 | 2016-12-07 17:00 |  | 0d |  |
| 178 |  | View Statistic Feature | 3d | 2016-12-08 08:00 | 2016-12-12 17:00 | 177 | 0d |  |
| 179 | 1.4.4 | **Testing** | 4.5d? | 2016-11-30 08:00 | 2016-12-06 12:00 | 173SS | 5d |  |
| 180 |  | Create Test Plan (Part 3) | 0.5d | 2016-11-30 08:00 | 2016-11-30 12:00 |  | 6.5d |  |
| 181 |  | Create Test Plan Checklist (Part 3) | 0.5d | 2016-11-30 13:00 | 2016-11-30 17:00 | 180 | 6.5d |  |
| 182 | 1.4.4.3 | **Writing Test Case (Part 3)** | 2d | 2016-12-01 08:00 | 2016-12-02 17:00 | 181 | 6.5d |  |
| 183 |  | Create System Module Test Case (Part 2) | 1d | 2016-12-01 08:00 | 2016-12-01 17:00 |  | 6.5d |  |
| 184 |  | Create Admin Module Test Case (Part 2) | 1d | 2016-12-02 08:00 | 2016-12-02 17:00 | 183 | 6.5d |  |
| 185 |  | Create Test Case Checklist (Part 3) | 1d? | 2016-12-01 08:00 | 2016-12-01 17:00 | 182SS | 5d |  |
| 186 |  | Execute Test (Part 3) | 2d | 2016-12-02 08:00 | 2016-12-05 17:00 | 185 | 5d |  |
| 187 |  | Create Test Report (Part 3) | 0.5d | 2016-12-06 08:00 | 2016-12-06 12:00 | 186 | 5d |  |
| 188 |  | Testing Part 3 Complete | 0d | 2016-12-06 12:00 | 2016-12-06 12:00 | 187 | 5d |  |
| 189 |  | Create Progress Report 3 (Part 3) | 0.5d | 2016-11-23 13:00 | 2016-11-23 17:00 |  | 14.5d |  |
| 190 |  | Submit Report 3 (Part 3) | 0d | 2016-11-23 17:00 | 2016-11-23 17:00 | 189 | 14.5d |  |
| 191 |  | Submit Report 4 (Part 3) | 0d | 2016-11-23 17:00 | 2016-11-23 17:00 | 190 | 14.5d | finish no earlier than 2016-09-15 17:00 |
| 192 |  | Create Quality Report (Part 3) | 1d? | 2016-12-06 13:00 | 2016-12-07 12:00 | 179 | 5d |  |
| 193 |  | Create Progress Report 5 (Part 3) | 0.5d | 2016-12-13 08:00 | 2016-12-13 12:00 | 173 | 0d |  |
| 194 |  | Submit Report 5 (Part 3) | 0d | 2016-12-13 12:00 | 2016-12-13 12:00 | 193 | 0d |  |
| 195 |  | Evaluation | 1d? | 2016-12-13 13:00 | 2016-12-14 12:00 | 194 | 0d |  |
| 196 |  | End Implement 3 | 0d | 2016-12-14 12:00 | 2016-12-14 12:00 | 195 | 0d |  |
| 197 | 1.5 | **Termination** | 8.5d | 2016-12-14 13:00 | 2016-12-26 17:00 | 154 | 0d |  |
| 198 |  | Create lession learned | 0.5d | 2016-12-14 13:00 | 2016-12-14 17:00 |  | 0d |  |
| 199 | 1.5.2 | **Final Report Document (Report 6)** | 2d | 2016-12-15 08:00 | 2016-12-16 17:00 | 198 | 0d |  |
| 200 |  | Create Final Report document | 2d | 2016-12-15 08:00 | 2016-12-16 17:00 |  | 0d |  |
| 201 |  | Create Installing Guide | 1d | 2016-12-15 08:00 | 2016-12-15 17:00 | 200SS | 0d |  |
| 202 |  | Create User Guideline | 1d | 2016-12-16 08:00 | 2016-12-16 17:00 | 201 | 0d |  |
| 203 |  | Create Project Result Assessment | 1d | 2016-12-15 08:00 | 2016-12-15 17:00 | 200SS | 1d |  |
| 204 |  | Create Slides for Final Presentation | 2d | 2016-12-15 08:00 | 2016-12-16 17:00 | 200SS | 0d |  |
| 205 |  | Submit all Final Documents and Source codes | 0d | 2016-12-16 17:00 | 2016-12-16 17:00 | 199 | 0d |  |
| 206 | 1.5.4 | **Pre-closing** | 4d | 2016-12-19 08:00 | 2016-12-22 17:00 | 205 | 0d |  |
| 207 |  | Trainning presentation | 4d | 2016-12-19 08:00 | 2016-12-22 17:00 |  | 0d |  |
| 208 | 1.5.5 | **Closing** | 2d | 2016-12-23 08:00 | 2016-12-26 17:00 | 206 | 0d |  |
| 209 |  | Presentation for Capstone Project | 2d | 2016-12-23 08:00 | 2016-12-26 17:00 |  | 0d |  |
| 210 |  | Complete Project | 0d | 2016-12-26 17:00 | 2016-12-26 17:00 | 209 | 0d |  |

## Version 2 (saved 2016-09-24)

Note of the change: HuyenPT: Commit BSN updated

Last finish 2016-12-26 → 2016-12-21 (-5d).

Removed: 76 System Module (Part 1); 77 Send Mail Feature; 174 System Module (Part 2); 175 Statistic Feature

Changed:

| ID | Task | Finish | Duration | Other |
| --- | --- | --- | --- | --- |
| 1 | **Bookaholic Social Network** | 2016-12-26 17:00 → 2016-12-21 17:00 (-5d) | 81d? → 78d? |  |
| 3 | Form up team roles |  |  | resources none → All Members |
| 4 | Select project idea |  |  | resources none → All Members |
| 6 | Define Project Scope |  |  | resources none → All Members |
| 7 | Define Project Features |  |  | resources none → All Members |
| 8 | Create Project Introduction |  |  | resources none → HuyenPT |
| 9 | Review Project Introduction |  |  | resources none → VanTTC |
| 10 | Update Project Introduction |  |  | resources none → HuyenPT |
| 11 | Create Mockup (Part 1) |  |  | resources none → HaiCM; VanTTC; YenNTH |
| 13 | Install tools & environment |  |  | resources none → All Members |
| 14 | Training using tools & environment |  |  | resources none → DangVH |
| 16 | Study .net MVC5 |  |  | resources none → DangVH; HuyenPT; VanTTC |
| 17 | Study Bootstrap, HTML5, CSS3 |  |  | resources none → HaiCM; YenNTH |
| 18 | Kick-off meeting |  |  | resources none → All Members |
| 22 | Define User Requirement (Part 1) |  |  | resources none → VanTTC |
| 25 | Create Q&A Sheet |  |  | resources none → YenNTH |
| 26 | Review Q&A Sheet |  |  | resources none → HuyenPT |
| 27 | Update Q&A Sheet |  |  | resources none → YenNTH |
| 28 | Translate Q&A Sheet to Japanese |  |  | resources none → YenNTH |
| 31 | Create PP Review Checklist |  |  | resources none → YenNTH |
| 32 | Create Project Plan in MS Word |  |  | resources none → HuyenPT |
| 33 | Create Project Schedule in .mpp file |  |  | resources none → DangVH; VanTTC |
| 34 | Create CM Plan |  |  | resources none → HaiCM |
| 35 | Review Project Plan, CM Plan, Schedule |  |  | resources none → HuyenPT |
| 36 | Update Project Plan, CM Plan, Schedule |  |  | resources none → DangVH; HaiCM; HuyenPT |
| 39 | Create SRS Review Checklist (Part 1) |  |  | resources none → YenNTH |
| 40 | Create User Requirement Specification (Part 1) |  |  | resources none → VanTTC |
| 41 | Review User Requirement Specification (Part 1) |  |  | resources none → HuyenPT |
| 42 | Update User Requirement Specification (Part 1) |  |  | resources none → VanTTC |
| 44 | Create Progress Report 1 (Part 1) |  |  | resources none → HuyenPT |
| 47 | Create Architecture Design |  |  | resources none → DangVH; HuyenPT; VanTTC |
| 48 | Create Mockup (Part 2) |  |  | resources none → HaiCM; VanTTC; YenNTH |
| 49 | Database Design |  |  | resources none → DangVH; HuyenPT; VanTTC |
| 50 | Class/Component Design |  |  | resources none → DangVH; HuyenPT; VanTTC |
| 51 | Create Design Review Checklist |  |  | resources none → YenNTH |
| 52 | Create Progress Report 2 (Part 1) |  |  | resources none → HuyenPT |
| 53 | Create Coding Checklist (Part 1) |  |  | resources none → DangVH |
| 57 | Google API |  |  | resources none → DangVH; HuyenPT; VanTTC |
| 58 | Facebook API |  |  | resources none → DangVH; HuyenPT; VanTTC |
| 59 | Create Unit Test Checklist (Part 1) |  |  | resources none → DangVH |
| 61 | "Admin Management" Screen |  |  | resources none → HaiCM; YenNTH |
| 62 | "Đăng Nhập"Screen |  |  | resources none → HaiCM; YenNTH |
| 63 | "Trang Chủ"Screen |  |  | resources none → HaiCM; YenNTH |
| 64 | "Trang cá nhân"Screen |  |  | resources none → HaiCM; YenNTH |
| 65 | "Tác giả"Screen |  |  | resources none → HaiCM; YenNTH |
| 68 | Book Management Feature |  |  | resources none → DangVH |
| 69 | Publisher Management Feature |  |  | resources none → VanTTC |
| 70 | Slide Management Feature |  |  | resources none → HuyenPT |
| 72 | Account Register Function |  |  | resources none → VanTTC |
| 73 | LogIn/LogOut Feature |  |  | resources none → DangVH |
| 74 | Edit Profile Function |  |  | resources none → HuyenPT |
| 75 | Reset Password Function |  |  | resources none → DangVH |
| 77 | Create Test Plan (Part 1) |  |  | resources none → YenNTH; HaiCM |
| 78 | Create Test Plan Checklist (Part 1) |  |  | resources none → HaiCM; YenNTH |
| 80 | Create Admin Module Test Case (Part 1) |  |  | resources none → HaiCM; YenNTH |
| 81 | Create Account Management Module Test Case (Part 1) |  |  | resources none → HaiCM; YenNTH |
| 82 | Create System Module Test Case (Part 1) |  |  | resources none → HaiCM; YenNTH |
| 83 | Create Test Case Checklist (Part 1) |  |  | resources none → YenNTH |
| 84 | Execute Test (Part 1) |  |  | resources none → HaiCM; YenNTH |
| 85 | Create Test Report (Part 1) |  |  | resources none → YenNTH |
| 87 | Create Progress Report 3 (Part 1) |  |  | resources none → HuyenPT |
| 90 | Create Quality Report (Part 1) |  |  | resources none → YenNTH |
| 91 | Create Progress Report 5 (Part 1) |  |  | was named Create Progress Report (Part 1); resources none → HuyenPT |
| 93 | Evaluation |  |  | resources none → Mr.SangNV |
| 97 | Define User Requirement (Part 2) |  |  | resources none → VanTTC |
| 100 | Create SRS Review Checklist (Part 2) |  |  | resources none → YenNTH |
| 101 | Create User Requirement Sepecification (Part 2) |  |  | resources none → VanTTC |
| 102 | Review User Requirement Specification (Part 2) |  |  | resources none → HuyenPT |
| 103 | Update User Requirement Specification (Part 2) |  |  | resources none → VanTTC |
| 105 | Create Coding Checklist (Part 2) |  |  | resources none → DangVH |

| ID | Task | Start | Finish | Duration | Total float | Predecessors | Other |
| --- | --- | --- | --- | --- | --- | --- | --- |
| 106 | Create Progress Report 1 (Part 2) |  |  |  |  |  | resources none → HuyenPT |
| 108 | Create Progress Report 2 (Part 2) |  |  |  |  |  | resources none → HuyenPT |
| 112 | .NET SignalR |  |  |  |  |  | resources none → DangVH; HuyenPT; VanTTC |
| 113 | Create Unit Test Checklist (Part 2) |  |  |  |  |  | resources none → DangVH |
| 115 | "Group Management" Screen |  |  |  |  |  | resources none → HaiCM; YenNTH |
| 118 | User Search Function |  |  |  |  |  | resources none → VanTTC |
| 119 | User Rate Book Function |  |  |  |  |  | resources none → HuyenPT |
| 120 | Suggest Book/Author Function |  |  |  |  |  | resources none → DangVH; HuyenPT; VanTTC |
| 122 | Management Post Feature |  |  |  |  |  | resources none → DangVH; HuyenPT; VanTTC |
| 123 | Management Comment Feature |  |  |  |  |  | resources none → DangVH; HuyenPT; VanTTC |
| 124 | Manage Reply-Comment Function |  |  |  |  |  | resources none → DangVH |
| 126 | Group Manage Feature |  |  |  |  |  | resources none → VanTTC |
| 127 | Manage Group Member Feature |  |  |  |  |  | resources none → DangVH; HuyenPT; VanTTC |
| 128 | Manage Group Post Feature |  |  |  |  |  | resources none → DangVH; HuyenPT; VanTTC |
| 130 | Interact With Other Accounts Feature |  |  |  |  |  | resources none → DangVH; HuyenPT; VanTTC |
| 131 | Interact With Group Feature |  |  |  |  |  | resources none → DangVH; HuyenPT; VanTTC |
| 133 | Create Test Plan (Part 2) |  |  |  |  |  | resources none → YenNTH; HaiCM |
| 134 | Create Test Plan Checklist (Part 2) |  |  |  |  |  | resources none → HaiCM; YenNTH |
| 136 | Create Common Module Test Case |  |  |  |  |  | resources none → HaiCM; YenNTH |
| 137 | Create Recommendation Management Module Test Case |  |  |  |  |  | resources none → HaiCM; YenNTH |
| 138 | Create Group Management Module Test Case |  |  |  |  |  | resources none → HaiCM; YenNTH |
| 139 | Create Interaction Management Module Test Case |  |  |  |  |  | resources none → HaiCM; YenNTH |
| 140 | Create Test Case Checklist (Part 2) |  |  |  |  |  | resources none → YenNTH |
| 141 | Execute Test (Part 2) |  |  |  |  |  | resources none → HaiCM; YenNTH |
| 142 | Create Test Report (Part 2) |  |  |  |  |  | resources none → YenNTH |
| 144 | Create Progress Report 3 (Part 2) |  |  |  |  |  | resources none → HuyenPT |
| 147 | Create Quality Report (Part 2) |  |  |  |  |  | resources none → DangVH |
| 148 | Create Progress Report 5 (Part 2) |  |  |  |  |  | resources none → HuyenPT |
| 150 | Evaluation |  |  |  |  |  | resources none → Mr.SangNV |
| 152 | **Implement 3** |  | 2016-12-14 12:00 → 2016-12-09 12:00 (-5d) | 15d? → 12d? |  |  |  |
| 154 | Define User Requirement (Part 3) |  |  |  |  |  | resources none → VanTTC |
| 157 | Create SRS Review Checklist (Part 3) |  |  |  |  |  | resources none → YenNTH |
| 158 | Create User Requirement Sepecification (Part 3) |  |  |  |  |  | resources none → VanTTC |
| 159 | Review User Requirement Specification (Part 3) |  |  |  |  |  | resources none → HuyenPT |
| 160 | Update User Requirement Specification (Part 3) |  |  |  |  |  | resources none → VanTTC |
| 162 | Create Coding Checklist (Part 3) |  |  |  |  |  | resources none → DangVH |
| 163 | Create Progress Report 1 (Part 3) |  |  |  |  |  | resources none → HuyenPT |
| 165 | Create Progress Report 2 (Part 3) |  |  |  |  |  | resources none → HuyenPT |
| 167 | **Development** |  | 2016-12-12 17:00 → 2016-12-07 17:00 (-5d) | 10d? → 7d? |  |  |  |
| 169 | Generate chart in .NET |  |  |  | 10.5d → 7.5d |  | resources none → VanTTC |
| 170 | Create Unit Test Checklist (Part 3) |  |  |  |  |  | resources none → DangVH |
| 171 | **Code & Unit Test** |  | 2016-12-12 17:00 → 2016-12-07 17:00 (-5d) | 9d → 6d |  |  |  |
| 172 | **Admin Module (Part 2)** | 2016-12-05 08:00 → 2016-11-30 08:00 (-5d) | 2016-12-12 17:00 → 2016-12-07 17:00 (-5d) |  |  | System Module (Part 2) → none |  |
| 173 | Manage User Account Feature | 2016-12-05 08:00 → 2016-11-30 08:00 (-5d) | 2016-12-07 17:00 → 2016-12-02 17:00 (-5d) |  |  |  | resources none → DangVH; HuyenPT |
| 174 | View Statistic Feature | 2016-12-08 08:00 → 2016-12-05 08:00 (-3d) | 2016-12-12 17:00 → 2016-12-07 17:00 (-5d) |  |  |  | resources none → VanTTC |
| 176 | Create Test Plan (Part 3) |  |  |  | 6.5d → 3.5d |  | resources none → YenNTH; HaiCM |
| 177 | Create Test Plan Checklist (Part 3) |  |  |  | 6.5d → 3.5d |  | resources none → HaiCM; YenNTH |
| 179 | Create System Module Test Case (Part 2) |  |  |  | 6.5d → 3.5d |  | resources none → HaiCM; YenNTH |
| 180 | Create Admin Module Test Case (Part 2) |  |  |  | 6.5d → 3.5d |  | resources none → HaiCM; YenNTH |
| 181 | Create Test Case Checklist (Part 3) |  |  |  | 5d → 2d |  | resources none → YenNTH |
| 182 | Execute Test (Part 3) |  |  |  | 5d → 2d |  | resources none → HaiCM; YenNTH |
| 183 | Create Test Report (Part 3) |  |  |  | 5d → 2d |  | resources none → YenNTH |
| 185 | Create Progress Report 3 (Part 3) |  |  |  | 14.5d → 11.5d |  | resources none → HuyenPT |
| 188 | Create Quality Report (Part 3) |  |  |  | 5d → 2d |  | resources none → DangVH |
| 189 | Create Progress Report 5 (Part 3) | 2016-12-13 08:00 → 2016-12-08 08:00 (-5d) | 2016-12-13 12:00 → 2016-12-08 12:00 (-5d) |  |  |  | resources none → HuyenPT |
| 190 | Submit Report 5 (Part 3) | 2016-12-13 12:00 → 2016-12-08 12:00 (-5d) | 2016-12-13 12:00 → 2016-12-08 12:00 (-5d) |  |  |  |  |
| 191 | Evaluation | 2016-12-13 13:00 → 2016-12-08 13:00 (-5d) | 2016-12-14 12:00 → 2016-12-09 12:00 (-5d) |  |  |  | resources none → Mr.SangNV |
| 192 | End Implement 3 | 2016-12-14 12:00 → 2016-12-09 12:00 (-5d) | 2016-12-14 12:00 → 2016-12-09 12:00 (-5d) |  |  |  |  |
| 193 | **Termination** | 2016-12-14 13:00 → 2016-12-09 13:00 (-5d) | 2016-12-26 17:00 → 2016-12-21 17:00 (-5d) |  |  |  |  |
| 194 | Create lession learned | 2016-12-14 13:00 → 2016-12-09 13:00 (-5d) | 2016-12-14 17:00 → 2016-12-09 17:00 (-5d) |  |  |  | resources none → HuyenPT |
| 195 | **Final Report Document (Report 6)** | 2016-12-15 08:00 → 2016-12-12 08:00 (-3d) | 2016-12-16 17:00 → 2016-12-13 17:00 (-3d) |  |  |  |  |
| 196 | Create Final Report document | 2016-12-15 08:00 → 2016-12-12 08:00 (-3d) | 2016-12-16 17:00 → 2016-12-13 17:00 (-3d) |  |  |  | resources none → All Members |
| 197 | Create Installing Guide | 2016-12-15 08:00 → 2016-12-12 08:00 (-3d) | 2016-12-15 17:00 → 2016-12-12 17:00 (-3d) |  |  |  | resources none → DangVH |
| 198 | Create User Guideline | 2016-12-16 08:00 → 2016-12-13 08:00 (-3d) | 2016-12-16 17:00 → 2016-12-13 17:00 (-3d) |  |  |  | resources none → HaiCM; YenNTH |
| 199 | Create Project Result Assessment | 2016-12-15 08:00 → 2016-12-12 08:00 (-3d) | 2016-12-15 17:00 → 2016-12-12 17:00 (-3d) |  |  |  | resources none → VanTTC |
| 200 | Create Slides for Final Presentation | 2016-12-15 08:00 → 2016-12-12 08:00 (-3d) | 2016-12-16 17:00 → 2016-12-13 17:00 (-3d) |  |  |  | resources none → DangVH; HuyenPT |
| 201 | Submit all Final Documents and Source codes | 2016-12-16 17:00 → 2016-12-13 17:00 (-3d) | 2016-12-16 17:00 → 2016-12-13 17:00 (-3d) |  |  |  |  |
| 202 | **Pre-closing** | 2016-12-19 08:00 → 2016-12-14 08:00 (-5d) | 2016-12-22 17:00 → 2016-12-19 17:00 (-3d) |  |  |  |  |
| 203 | Trainning presentation | 2016-12-19 08:00 → 2016-12-14 08:00 (-5d) | 2016-12-22 17:00 → 2016-12-19 17:00 (-3d) |  |  |  | resources none → All Members; Mr.SangNV |
| 204 | **Closing** | 2016-12-23 08:00 → 2016-12-20 08:00 (-3d) | 2016-12-26 17:00 → 2016-12-21 17:00 (-5d) |  |  |  |  |

| ID | Task | Start | Finish | Other |
| --- | --- | --- | --- | --- |
| 205 | Presentation for Capstone Project | 2016-12-23 08:00 → 2016-12-20 08:00 (-3d) | 2016-12-26 17:00 → 2016-12-21 17:00 (-5d) | resources none → All Members |
| 206 | Complete Project | 2016-12-26 17:00 → 2016-12-21 17:00 (-5d) | 2016-12-26 17:00 → 2016-12-21 17:00 (-5d) |  |
